# Simple Project Plan

Schedule from MS Project, 2017-11-02 to 2017-12-28, A marks actual dates.

## Calendars

- Standard: Mon-Fri 08:00-12:00, 13:00-17:00; Sat-Sun off.

## Resources

| Resource |
| --- |
| 姚荣富 |
| 姚航军 |
| 张俊梅 |
| 张兴亮 |
| 叶亮 |
| 贾晶晶 |
| 聂家刚 |
| 何德鹏 |
| 毛远桥 |
| 王富贵 |
| 肖扬 |
| 朱文晓 |

## Schedule

| ID | WBS | Task | Type | Duration | Start | Finish | Predecessors | Complete | Remaining | Total slack | Resources | Work | Actual work |
| --- | --- | --- | --- | --- | --- | --- | --- | --- | --- | --- | --- | --- | --- |
| 1 | 1 | **9-Advance search needs to include customized metadata fields** |  | 1d? | 2017-11-02 A | 2017-11-02 |  | 33% | 0.67d? |  |  | 24h | 8h |
| 2 | 1.1 | 元数据自定义CMAPI接口实现 | manual | 1d | 2017-11-07 A | 2017-11-07 A |  | 100% |  |  | 姚荣富 | 8h | 8h |
| 3 | 1.2 | CMWEB高级搜索元数据自定义实现 | manual | 1d | 2017-11-02 | 2017-11-02 |  |  |  |  | 姚航军 | 8h |  |
| 4 | 1.3 | 测试 | manual | 1d | 2017-11-02 | 2017-11-02 |  |  |  |  | 张俊梅 | 8h |  |
| 5 | 2 | **11-Advance search needs to include customized metadata fields** |  | 1d? | 2017-11-02 A | 2017-11-02 |  | 33% | 0.67d? |  |  | 24h | 8h |
| 6 | 2.1 | 元数据自定义CMAPI接口实现 | manual | 1d | 2017-11-02 A | 2017-11-08 A | 2 | 100% |  |  | 姚荣富 | 8h | 8h |
| 7 | 2.2 | Premiere高级搜索元数据自定义实现 | manual | 1d | 2017-11-02 | 2017-11-02 |  |  |  |  | 姚航军 | 8h |  |
| 8 | 2.3 | 测试 | manual | 1d | 2017-11-02 | 2017-11-02 |  |  |  |  | 贾晶晶 | 8h |  |
| 9 | 3 | **24-Adobe Premiere plugin: Rundown register** |  | 2d | 2017-11-02 A | 2017-11-03 |  | 33% | 1.33d | 0d |  | 24h | 8h |
| 10 | 3.1 | CMWEB插件里实现 | manual | 1d | 2017-11-02 | 2017-11-02 |  |  |  |  | 张兴亮 | 8h |  |
| 11 | 3.2 | 合成后注册窗口实现 | manual | 1d | 2017-11-02 A | 2017-11-02 A |  | 100% |  |  | 叶亮 | 8h | 8h |
| 12 | 3.3 | 测试 | manual | 1d | 2017-11-03 | 2017-11-03 |  |  |  |  | 贾晶晶 | 8h |  |
| 13 | 4 | **37-WEB CM save current frame as Image from Hi-Res** |  | 4d | 2017-11-09 A | 2017-11-14 |  | 88% | 0.5d |  |  | 64h | 56h |
| 14 | 4.1 | NJG接口实现（srcpath,dstpath,frameno,width,height）性能要求<1s | manual | 3d | 2017-11-09 A | 2017-11-13 A |  | 100% |  |  | 朱文晓 | 24h | 24h |
| 15 | 4.2 | CMAPI接口实现(highpath, frameno, entity【post】) | manual | 4d | 2017-11-09 A | 2017-11-14 A | 6 | 100% |  |  | 姚荣富 | 32h | 32h |
| 16 | 4.3 | CMWEB界面实现 | manual | 1d | 2017-11-09 | 2017-11-09 |  |  |  |  | 姚航军 | 8h |  |
| 17 | 5 | **40-Web Editor support After Effect CG template** |  | 29d? | 2017-11-02 A | 2017-12-12 |  | 4% | 27.93d? | 0d |  | 208h |  |
| 18 | 5.1 | CMAPI接口实现 | manual | 1d | 2017-11-02 A | 2017-11-02 A |  | 100% |  |  |  |  |  |
| 19 | 5.2 | **执行器实现** |  | 20d? | 2017-11-02 | 2017-11-29 |  |  |  |  |  | 96h |  |
| 20 | 5.2.1 | 生成JSX,AEP | manual | 5d | 2017-11-08 | 2017-11-14 |  |  |  |  | 叶亮 | 40h |  |
| 21 | 5.2.2 | restApi收进度 | manual | 5d | 2017-11-15 | 2017-11-21 | 20 |  |  |  | 叶亮 | 40h |  |
| 22 | 5.2.3 | Render调ME接口 | manual | 2d | 2017-11-22 | 2017-11-23 | 21 |  |  |  | 叶亮 | 16h |  |
| 23 | 5.3 | **ME Plugin Server** |  | 1d? | 2017-11-02 | 2017-11-02 |  |  |  |  |  | 104h |  |
| 24 | 5.3.1 | Server框架 | manual | 5d | 2017-11-24 | 2017-11-30 | 22 |  |  |  | 叶亮 | 40h |  |
| 25 | 5.3.2 | restApi接收任务 | manual | 5d | 2017-12-01 | 2017-12-07 | 24 |  |  |  | 叶亮 | 40h |  |
| 26 | 5.3.3 | 进度、状态回调 | manual | 3d | 2017-12-08 | 2017-12-12 | 25 |  |  |  | 叶亮 | 24h |  |
| 27 | 5.4 | JOVE实现 | manual | 1d | 2017-11-02 | 2017-11-02 |  |  |  |  | 何德鹏 | 8h |  |

| ID | WBS | Task | Type | Duration | Start | Finish | Predecessors | Complete | Remaining | Actual finish | Total slack | Resources | Work | Actual work |
| --- | --- | --- | --- | --- | --- | --- | --- | --- | --- | --- | --- | --- | --- | --- |
| 28 | 6 | **44-facebook publish support add link onto picture while publish the picture** |  | 6d | 2017-11-14 | 2017-11-21 |  |  |  |  |  |  | 56h |  |
| 29 | 6.1 | 调研 | manual | 3d | 2017-11-14 | 2017-11-16 |  |  |  |  |  | 毛远桥 | 24h |  |
| 30 | 6.2 | CMAPI接口实现 | manual | 2d | 2017-11-17 | 2017-11-20 | 29 |  |  |  |  | 毛远桥 | 16h |  |
| 31 | 6.3 | SNS功能实现 | manual | 1d | 2017-11-21 | 2017-11-21 | 30 |  |  |  |  | 毛远桥 | 8h |  |
| 32 | 6.4 | CMWEB界面实现 | manual | 1d | 2017-11-14 | 2017-11-14 |  |  |  |  |  | 姚航军 | 8h |  |
| 33 | 7 | **46-Hive must be able to add Headlines to videos published on social media** |  | 5d | 2017-11-22 | 2017-11-28 |  |  |  |  |  |  | 48h |  |
| 34 | 7.1 | CMAPI接口实现 | manual | 1d | 2017-11-22 | 2017-11-22 | 31 |  |  |  |  | 毛远桥 | 8h |  |
| 35 | 7.2 | 分片过多处理 | manual | 1d | 2017-11-23 | 2017-11-23 | 34 |  |  |  |  | 毛远桥 | 8h |  |
| 36 | 7.3 | token权限文档 | manual | 1d | 2017-11-24 | 2017-11-24 | 35 |  |  |  |  | 毛远桥 | 8h |  |
| 37 | 7.4 | 文档整理 | manual | 1d | 2017-11-27 | 2017-11-27 | 36 |  |  |  |  | 毛远桥 | 8h |  |
| 38 | 7.5 | SNS功能实现 | manual | 1d | 2017-11-28 | 2017-11-28 | 37 |  |  |  |  | 毛远桥 | 8h |  |
| 39 | 7.6 | CMWEB功能实现 | manual | 1d | 2017-11-02 | 2017-11-02 |  |  |  |  |  | 姚航军 | 8h |  |
| 40 | 8 | **47-Send to Twitter support clip duration> 30s** |  | 8d | 2017-11-29 | 2017-12-08 |  |  |  |  |  |  | 64h |  |
| 41 | 8.1 | **SNS接口实现** |  | 1d | 2017-11-29 | 2017-11-29 |  |  |  |  |  |  | 64h |  |
| 42 | 8.1.1 | upload_init | manual | 2d | 2017-11-29 | 2017-11-30 | 38 |  |  |  |  | 毛远桥 | 16h |  |
| 43 | 8.1.2 | upload_append | manual | 2d | 2017-12-01 | 2017-12-04 | 42 |  |  |  |  | 毛远桥 | 16h |  |
| 44 | 8.1.3 | upload_finalize | manual | 2d | 2017-12-05 | 2017-12-06 | 43 |  |  |  |  | 毛远桥 | 16h |  |
| 45 | 8.1.4 | tweet | manual | 2d | 2017-12-07 | 2017-12-08 | 44 |  |  |  |  | 毛远桥 | 16h |  |
| 46 | 9 | **48-2 Ability to keep a record for SNS publish（drop）** |  | 28d | 2017-11-15 A | 2017-12-22 |  | 100% |  | 2017-12-12 |  |  | 48h | 48h |
| 47 | 9.1 | CMAPI接口实现（接口加参数是否立即发送，通过CM传的回调URL判断是否入TM） | manual | 3d | 2017-11-15 A | 2017-11-17 A | 15 | 100% |  |  |  | 姚荣富 | 24h | 24h |
| 48 | 9.2 | SNS实现 | manual | 2d | 2017-12-11 A | 2017-12-12 A | 45 | 100% |  |  |  | 毛远桥 | 16h | 16h |
| 49 | 9.3 | CMWEB实现 | manual | 1d | 2017-11-15 A | 2017-11-15 A |  | 100% |  |  |  | 姚航军 | 8h | 8h |
| 50 | 10 | **55-Save "SOM" "EOM" from Web CM** |  | 13d | 2017-11-03 A | 2017-11-21 |  | 67% | 4.33d |  | 0d |  | 24h | 16h |
| 51 | 10.1 | CMAPI接口实现 | manual | 2d | 2017-11-20 A | 2017-11-21 A | 47 | 100% |  |  |  | 姚荣富 | 16h | 16h |
| 52 | 10.2 | CMWEB实现 | manual | 1d | 2017-11-03 | 2017-11-03 |  |  |  |  |  | 姚航军 | 8h |  |

| ID | WBS | Task | Type | Duration | Start | Finish | Predecessors | Complete | Remaining | Total slack | Resources | Work | Actual work |
| --- | --- | --- | --- | --- | --- | --- | --- | --- | --- | --- | --- | --- | --- |
| 53 | 11 | **62-one generation** |  | 10d? | 2017-11-29 | 2017-12-12 |  |  |  | 0d |  | 80h |  |
| 54 | 11.1 | save relation | manual | 5d | 2017-11-29 | 2017-12-05 |  |  |  |  | 姚荣富 | 40h |  |
| 55 | 11.2 | get relation | manual | 5d | 2017-12-06 | 2017-12-12 |  |  |  |  | 姚荣富 | 40h |  |
| 56 | 11.3 | delete relation（暂不考虑，方案需要与HIVE讨论） | manual | 1d? | 2017-11-29 | 2017-11-29 |  |  |  |  |  |  |  |
| 57 | 12 | **69-Adobe Remote Media Encoder Supporting (TBD)** |  | 2d | 2017-12-27 | 2017-12-28 |  |  |  | 0d |  | 16h |  |
| 58 | 12.1 | 调研 | manual | 2d | 2017-12-27 | 2017-12-28 | 69 |  |  |  | 叶亮 | 16h |  |
| 59 | 13 | 72-Zeddis DM - Premiere /AE Plugin Installation | manual | 1d | 2017-11-02 A | 2017-11-02 A |  | 100% |  |  | 贾晶晶 | 8h | 8h |
| 60 | 14 | 75- Use HTTPS protocol in our web tools and any other HTTP connection | manual | 1d | 2017-11-20 A | 2017-11-20 A |  | 100% |  |  | 王富贵 | 8h | 8h |
| 61 | 15 | **82-Search Result搜索改进** |  | 1d | 2017-11-02 A | 2017-11-02 A |  | 100% |  |  |  | 8h | 8h |
| 62 | 15.1 | CMAPI配合 | manual | 1d | 2017-11-02 A | 2017-11-02 A |  | 100% |  |  | 姚荣富 | 8h | 8h |
| 63 | 16 | **91-2 Task Monitor改进** |  | 1d | 2017-11-02 A | 2017-11-02 A |  | 100% |  |  |  | 16h | 16h |
| 64 | 16.1 | 任务添加到TM | manual | 1d | 2017-11-02 A | 2017-11-02 A |  | 100% |  |  | 姚荣富 | 8h | 8h |
| 65 | 16.2 | 测试 | manual | 1d | 2017-11-02 A | 2017-11-02 A |  | 100% |  |  | 贾晶晶 | 8h | 8h |
| 66 | 17 | **92-ENPS归档** |  | 1d | 2017-11-13 A | 2017-11-13 A |  | 100% |  |  |  | 8h | 8h |
| 67 | 17.1 | MOSGW实现 | manual | 1d | 2017-11-13 A | 2017-11-13 A |  | 100% |  |  | 毛远桥 | 8h | 8h |
| 68 | 18 | **94-Growing file editing on Premiere during P2 file importing** |  | 39d | 2017-11-02 A | 2017-12-26 |  | 9% | 35.45d | 0d |  | 88h | 8h |
| 69 | 18.1 | File Import正在引入的P2多段素材支持上Premiere编辑 | manual | 10d | 2017-12-13 | 2017-12-26 | 26 |  |  |  | 叶亮 | 80h |  |
| 70 | 18.2 | CommonGW边引入边编辑的素材支持上Premiere编辑(same as V1.3.1) | manual | 1d | 2017-11-02 A | 2017-11-02 A |  | 100% |  |  | 叶亮 | 8h | 8h |
| 71 | 19 | **97-支持CS ML上面有Ding的功能** |  | 5d | 2017-11-29 | 2017-12-05 |  |  |  | 0d |  | 48h |  |
| 72 | 19.1 | CMAPI接口实现 | manual | 5d | 2017-11-29 | 2017-12-05 | 86, 51 |  |  |  | 姚荣富 | 40h |  |
| 73 | 19.2 | CSML实现 | manual | 1d | 2017-11-29 | 2017-11-29 |  |  |  |  | 聂家刚 | 8h |  |
| 74 | 20 | **路透需求** |  | 22d | 2017-11-02 A | 2017-12-01 |  | 44% | 12.22d | 0d |  | 144h | 64h |
| 75 | 20.1 | **1）Premiere预低合高流程** |  | 1d | 2017-11-02 A | 2017-11-02 A |  | 100% |  |  |  | 40h | 40h |
| 76 | 20.1.1 | **CMAPI** |  | 1d | 2017-11-02 A | 2017-11-02 A |  | 100% |  |  |  | 24h | 24h |
| 77 | 20.1.1.1 | 修改fcp xml的生成逻辑 | manual | 1d | 2017-11-02 A | 2017-11-02 A |  | 100% |  |  | 叶亮 | 8h | 8h |
| 78 | 20.1.1.2 | 关联高低质量对应关系 | manual | 1d | 2017-11-02 A | 2017-11-02 A |  | 100% |  |  | 叶亮 | 8h | 8h |
| 79 | 20.1.1.3 | 需要同时处理高低质量就绪，和采集中低质量长度大于高质量的情况 | manual | 1d | 2017-11-02 A | 2017-11-02 A |  | 100% |  |  | 叶亮 | 8h | 8h |

| ID | WBS | Task | Type | Duration | Start | Finish | Complete | Total slack | Resources | Work | Actual work |
| --- | --- | --- | --- | --- | --- | --- | --- | --- | --- | --- | --- |
| 80 | 20.1.2 | **Premiere插件：** |  | 1d | 2017-11-02 A | 2017-11-02 A | 100% |  |  | 16h | 16h |
| 81 | 20.1.2.1 | 代理功能逻辑修改 | manual | 1d | 2017-11-02 A | 2017-11-02 A | 100% |  | 叶亮 | 8h | 8h |
| 82 | 20.1.2.2 | 新增bin里面素材文件路径替换 | manual | 1d | 2017-11-02 A | 2017-11-02 A | 100% |  | 叶亮 | 8h | 8h |
| 83 | 20.2 | 2) Remote Encoder | manual | 10d | 2017-11-20 | 2017-12-01 |  |  | 叶亮 | 80h |  |
| 84 | 20.3 | **2）FTP迁移流程** |  | 3d | 2017-11-15 A | 2017-11-17 A | 100% |  |  | 24h | 24h |
| 85 | 20.3.1 | FTP迁移MPC协议构造 | manual | 3d | 2017-11-15 A | 2017-11-17 A | 100% |  | 姚荣富 | 24h | 24h |
| 86 | 21 | RTV获取素材元数据优化 | manual | 2d | 2017-11-27 | 2017-11-28 |  |  | 姚荣富 | 16h |  |
| 87 | 22 | **SNS调研** |  | 1d? | 2017-11-02 | 2017-11-02 |  | 0d |  | 56h |  |
| 88 | 22.1 | **FACEBOOK** |  | 1d? | 2017-11-02 | 2017-11-02 |  | 0d |  | 32h |  |
| 89 | 22.1.1 | 图片从草稿箱发出去 | manual | 1d? | 2017-11-02 | 2017-11-02 |  |  | 毛远桥 | 8h |  |
| 90 | 22.1.2 | 视频从草稿箱发出去 | manual | 1d? | 2017-11-02 | 2017-11-02 |  |  | 毛远桥 | 8h |  |
| 91 | 22.1.3 | 视频其他人看不到 | manual | 1d? | 2017-11-02 | 2017-11-02 |  |  | 毛远桥 | 8h |  |
| 92 | 22.1.4 | 贴子删除 |  | 1d? | 2017-11-02 | 2017-11-02 |  | 40d | 毛远桥 | 8h |  |
| 93 | 22.2 | **TW** |  | 1d? | 2017-11-02 | 2017-11-02 |  |  |  | 8h |  |
| 94 | 22.2.1 | 大文件512MB | manual | 1d? | 2017-11-02 | 2017-11-02 |  |  | 毛远桥 | 8h |  |
| 95 | 22.2.2 | 贴子删除 | milestone | 0d | 2017-11-02 | 2017-11-02 |  | 1d | 毛远桥 |  |  |
| 96 | 22.3 | **YOUTUBE** |  | 1d? | 2017-11-02 | 2017-11-02 |  |  |  | 16h |  |
| 97 | 22.3.1 | 加TAG | manual | 1d? | 2017-11-02 | 2017-11-02 |  |  | 毛远桥 | 8h |  |
| 98 | 22.3.2 | 贴子删除 | manual | 1d? | 2017-11-02 | 2017-11-02 |  |  | 毛远桥 | 8h |  |
